# Programa de obra de la torre (4D)

Schedule from an IFC model, 2028-09-16 to 2030-04-30.
Torre de servicios de primer nivel - Hospital Héctor Abad Gómez (Yondó)
Las etapas son del cronograma (dato del proyecto); su reparto por piso y disciplina es una estimación de este modelo.

## Schedule

| ID | Activity | Start | Finish |
| --- | --- | --- | --- |
| F7-PIL | Pilotes preexcavados (tras la demolición del antiguo Centro Vida) | 2028-09-16 | 2028-10-31 |
| F7-DAD | Dados, losas de pilotes, arranques y vigas de amarre | 2028-11-01 | 2028-12-15 |
| F7-FOS | Fosos, cisternas y contrapiso | 2028-12-01 | 2028-12-31 |
| F8-EST1 | Estructura del piso 1: columnas, muros, escaleras y losa del nivel +4,50 | 2028-12-16 | 2029-02-15 |
| F8-EST2 | Estructura del piso 2: columnas, muros, escaleras y losa del nivel +8,70 | 2029-02-16 | 2029-03-31 |
| F8-EST3 | Estructura del piso 3: columnas, muros, escaleras y losa del nivel +12,90 | 2029-04-01 | 2029-05-15 |
| F8-EST4 | Estructura del piso 4: columnas, muros, escaleras y losa del nivel +17,10 (cubierta) | 2029-05-16 | 2029-06-30 |
| F8-ARQ1 | Mampostería, fachada y ventanas del piso 1 | 2029-02-16 | 2029-03-31 |
| F8-ARQ2 | Mampostería, fachada y ventanas del piso 2 | 2029-04-01 | 2029-05-15 |
| F8-ARQ3 | Mampostería, fachada y ventanas del piso 3 | 2029-05-16 | 2029-06-30 |
| F8-ARQ4 | Mampostería, fachada y ventanas del piso 4 | 2029-07-01 | 2029-08-15 |
| F8-CUB | Cubierta impermeabilizada, casetas y antepechos | 2029-07-01 | 2029-08-31 |
| F8-BT | Bloque técnico y exteriores en obra gris | 2029-03-01 | 2029-06-30 |
| F9-ACA1 | Acabados del piso 1: pisos, cielos rasos y puertas | 2029-05-01 | 2029-07-15 |
| F9-ACA2 | Acabados del piso 2: pisos, cielos rasos y puertas | 2029-07-01 | 2029-09-15 |
| F9-ACA3 | Acabados del piso 3: pisos, cielos rasos y puertas | 2029-09-01 | 2029-11-15 |
| F9-ACA4 | Acabados del piso 4: pisos, cielos rasos y puertas | 2029-11-01 | 2030-01-15 |
| F9-FIJ1 | Aparatos sanitarios, gases, seguridad y equipamiento fijo del piso 1 | 2029-06-01 | 2029-08-15 |
| F9-FIJ2 | Aparatos sanitarios, gases, seguridad y equipamiento fijo del piso 2 | 2029-08-01 | 2029-10-15 |
| F9-FIJ3 | Aparatos sanitarios, gases, seguridad y equipamiento fijo del piso 3 | 2029-10-01 | 2029-12-15 |
| F9-FIJ4 | Aparatos sanitarios, gases, seguridad y equipamiento fijo del piso 4 | 2029-11-15 | 2030-01-31 |
| F9-FIJBT | Subestación, planta eléctrica, UPS, baterías, bombas y central de gases del bloque técnico | 2029-07-01 | 2029-10-31 |
| F9-FIJCUB | Paneles solares, condensadoras y tanques de la cubierta | 2029-09-01 | 2029-12-31 |
| F10-DOT1 | Compra e instalación de la dotación del piso 1 | 2029-08-01 | 2029-10-31 |
| F10-DOT2 | Compra e instalación de la dotación del piso 2 | 2029-10-01 | 2029-12-31 |
| F10-DOT3 | Compra e instalación de la dotación del piso 3 | 2029-11-01 | 2030-01-31 |
| F10-DOT4 | Compra e instalación de la dotación del piso 4 | 2029-12-01 | 2030-02-28 |
| F10-DOTBT | Dotación del bloque técnico, la cubierta y los exteriores | 2030-01-01 | 2030-02-28 |
| F11-PEM | Puesta en marcha, habilitación y traslado de servicios | 2030-02-01 | 2030-04-30 |

Notes:
- F7-PIL: Etapa 7 del cronograma: Demolición del antiguo Centro Vida (con retiro de asbesto) y cimentación
- F7-DAD: Etapa 7 del cronograma: Demolición del antiguo Centro Vida (con retiro de asbesto) y cimentación
- F7-FOS: Etapa 7 del cronograma: Demolición del antiguo Centro Vida (con retiro de asbesto) y cimentación
- F8-EST1: Etapa 8 del cronograma: Estructura, mampostería, redes y cubierta
- F8-EST2: Etapa 8 del cronograma: Estructura, mampostería, redes y cubierta
- F8-EST3: Etapa 8 del cronograma: Estructura, mampostería, redes y cubierta
- F8-EST4: Etapa 8 del cronograma: Estructura, mampostería, redes y cubierta
- F8-ARQ1: Etapa 8 del cronograma: Estructura, mampostería, redes y cubierta
- F8-ARQ2: Etapa 8 del cronograma: Estructura, mampostería, redes y cubierta
- F8-ARQ3: Etapa 8 del cronograma: Estructura, mampostería, redes y cubierta
- F8-ARQ4: Etapa 8 del cronograma: Estructura, mampostería, redes y cubierta
- F8-CUB: Etapa 8 del cronograma: Estructura, mampostería, redes y cubierta
- F8-BT: Etapa 8 del cronograma: Estructura, mampostería, redes y cubierta
- F9-ACA1: Etapa 9 del cronograma: Acabados, equipamiento fijo, ascensores, gases, aire, solar y pruebas
- F9-ACA2: Etapa 9 del cronograma: Acabados, equipamiento fijo, ascensores, gases, aire, solar y pruebas
- F9-ACA3: Etapa 9 del cronograma: Acabados, equipamiento fijo, ascensores, gases, aire, solar y pruebas
- F9-ACA4: Etapa 9 del cronograma: Acabados, equipamiento fijo, ascensores, gases, aire, solar y pruebas
- F9-FIJ1: Etapa 9 del cronograma: Acabados, equipamiento fijo, ascensores, gases, aire, solar y pruebas
- F9-FIJ2: Etapa 9 del cronograma: Acabados, equipamiento fijo, ascensores, gases, aire, solar y pruebas
- F9-FIJ3: Etapa 9 del cronograma: Acabados, equipamiento fijo, ascensores, gases, aire, solar y pruebas
- F9-FIJ4: Etapa 9 del cronograma: Acabados, equipamiento fijo, ascensores, gases, aire, solar y pruebas
- F9-FIJBT: Etapa 9 del cronograma: Acabados, equipamiento fijo, ascensores, gases, aire, solar y pruebas
- F9-FIJCUB: Etapa 9 del cronograma: Acabados, equipamiento fijo, ascensores, gases, aire, solar y pruebas
- F10-DOT1: Etapa 10 del cronograma: Compra e instalación de dotación biomédica, laboratorio y TIC (desde el 70 % de avance de obra, Res. 2373 de 2025)
- F10-DOT2: Etapa 10 del cronograma: Compra e instalación de dotación biomédica, laboratorio y TIC (desde el 70 % de avance de obra, Res. 2373 de 2025)
- F10-DOT3: Etapa 10 del cronograma: Compra e instalación de dotación biomédica, laboratorio y TIC (desde el 70 % de avance de obra, Res. 2373 de 2025)
- F10-DOT4: Etapa 10 del cronograma: Compra e instalación de dotación biomédica, laboratorio y TIC (desde el 70 % de avance de obra, Res. 2373 de 2025)
- F10-DOTBT: Etapa 10 del cronograma: Compra e instalación de dotación biomédica, laboratorio y TIC (desde el 70 % de avance de obra, Res. 2373 de 2025)
- F11-PEM: Etapa 11 del cronograma: Puesta en marcha, habilitación y traslado de servicios
